# lab_01

Schedule from MS Project, 2024-03-01 to 2024-07-24, costs in ₽.
Команда разработчиков из 16 человек занимается созданием карты города на основе собственного модуля отображения. Проект должен быть завершен в течение 6 месяцев. Бюджет проекта: 50 000 рублей.

## Calendars

- Стандартный: Mon-Fri 09:00-13:00, 14:00-18:00; Sat-Sun off. Exceptions (off unless hours are given): 2024-03-08 (8 марта, recurring), 2024-04-29 to 2024-05-01 (майские праздники, recurring), 2024-05-09 to 2024-05-10 (9 мая, recurring), 2024-06-12 (день России, recurring).

## Resources

| Resource | Group | Unit | Rate | Cost per use |
| --- | --- | --- | --- | --- |
| Ведущий программист | Программирование |  | 10 | 100 |
| Программист #1 | Программирование |  | 7 | 50 |
| Программист #2 | Программирование |  | 7 | 50 |
| Программист #3 | Программирование |  | 7 | 50 |
| Программист #4 | Программирование |  | 7 | 50 |
| Системный аналитик | Анализ |  | 20 | 300 |
| Художник-дизайнер | Дизайн |  | 8 | 70 |
| Технический писатель | Документация |  | 5 | 20 |
| Web-дизайнер | Internet |  | 7 | 50 |
| 3D аниматор | Дизайн |  | 8 | 70 |
| Мультимедиа корреспондент | М-медиа |  | 3 | 20 |
| Наборщик данных #1 | Ввод данных |  | 2 | 10 |
| Наборщик данных #2 | Ввод данных |  | 2 | 10 |
| Наборщик данных #3 | Ввод данных |  | 2 | 10 |
| Наборщик данных #4 | Ввод данных |  | 2 | 10 |
| Наборщик данных #5 | Ввод данных |  | 2 | 10 |
| Сервер | Аренда оборудования |  | 2 |  |
| Стажер |  |  |  |  |
| Стажер | Программирование |  | 3 |  |
| Лицензия на спец. ПО | Лицензии | шт | 5000 | 400 |

## Schedule

| ID | WBS | Task | Type | Duration | Start | Finish | Predecessors | Baseline start | Baseline finish | Baseline duration | Total slack | Free slack | Constraint | Resources | Work | Cost | Baseline cost |
| --- | --- | --- | --- | --- | --- | --- | --- | --- | --- | --- | --- | --- | --- | --- | --- | --- | --- |
| 1 | 1 | Начало проекта | milestone | 0w | 2024-03-01 09:00 | 2024-03-01 09:00 |  | 2024-03-01 09:00 | 2024-03-01 09:00 | 0w | 39.75d | 0d |  |  |  |  |  |
| 2 | 2 | **Создание интерфейса** |  | 72.21d | 2024-03-01 09:00 | 2024-06-20 10:40 | 1 | 2024-03-01 09:00 | 2024-06-20 10:40 | 72.21d | 1.25d |  |  |  | 560h | 5,650 | 5,650 |
| 3 | 2.1 | **Разработка дизайна интерфейса** |  | 25.62d | 2024-03-01 09:00 | 2024-04-08 15:00 |  | 2024-03-01 09:00 | 2024-04-08 15:00 | 25.62d | 39.75d | 0d |  |  | 320h | 2,770 | 2,770 |
| 4 | 2.1.1 | Разработка 2D графических элементов |  | 3w | 2024-03-01 09:00 | 2024-03-25 12:00 |  | 2024-03-01 09:00 | 2024-03-25 12:00 | 3w | 39.75d | 0d |  | Художник-дизайнер | 120h | 1,030 | 1,030 |
| 5 | 2.1.2 | Разработка 3D графических элементов |  | 2w | 2024-03-01 09:00 | 2024-03-18 11:00 | 4SS | 2024-03-01 09:00 | 2024-03-18 11:00 | 2w | 39.75d | 0d |  | 3D аниматор | 80h | 710 | 710 |
| 6 | 2.1.3 | Создание заставки |  | 3w | 2024-03-18 11:00 | 2024-04-08 15:00 | 5 | 2024-03-18 11:00 | 2024-04-08 15:00 | 3w | 39.75d |  |  | 3D аниматор | 120h | 1,030 | 1,030 |
| 7 | 2.2 | Программирование интерфейса |  | 1.5w | 2024-06-07 15:40 | 2024-06-20 10:40 | 3, 12 | 2024-06-07 15:40 | 2024-06-20 10:40 | 1.5w | 1.25d | 0d |  | Программист #3; Программист #4; Программист #1; Программист #2 | 240h | 1,880 | 1,880 |
| 8 | 3 | **Построение базы объектов** |  | 78.62d | 2024-03-25 12:00 | 2024-07-19 18:00 |  | 2024-03-25 12:00 | 2024-07-19 10:00 | 77.75d | 2.12d |  |  | Сервер | 5510h | 15,210 | 15,194 |
| 9 | 3.1 | Анализ и построение структуры базы объектов |  | 2w | 2024-03-25 12:00 | 2024-04-08 15:00 |  | 2024-03-25 12:00 | 2024-04-08 15:00 | 2w | 3d | 0d |  | Системный аналитик | 80h | 1,900 | 1,900 |
| 10 | 3.2 | Программирование средств обработки базы объектов |  | 1.5w | 2024-04-08 15:00 | 2024-04-18 10:00 | 9 | 2024-04-08 15:00 | 2024-04-18 10:00 | 1.5w | 3d | 0.88d |  | Программист #3; Программист #4; Программист #1; Программист #2 | 240h | 1,880 | 1,880 |
| 11 | 3.3 | Наполнение базы объектов |  | 12w | 2024-04-19 09:00 | 2024-07-19 18:00 | 10 | 2024-04-18 10:00 | 2024-07-19 10:00 | 12w | 2.12d |  | finish no earlier than 2024-07-19 18:00 | Наборщик данных #1; Наборщик данных #2; Наборщик данных #3; Наборщик данных #4; Наборщик данных #5 | 2400h | 4,850 | 4,850 |
| 12 | 4 | **Создание ядра GIS** |  | 64.71d | 2024-03-01 09:00 | 2024-06-07 15:40 |  | 2024-03-01 09:00 | 2024-06-07 15:40 | 64.71d | 1.25d | 0d |  |  | 1880h | 18,230.05 | 18,230.05 |
| 13 | 4.1 | Анализ и проектирование ядра |  | 3w | 2024-03-01 09:00 | 2024-03-25 12:00 |  | 2024-03-01 09:00 | 2024-03-25 12:00 | 3w | 1.25d | 0d |  | Ведущий программист; Системный аналитик | 240h | 4,000 | 4,000 |
| 14 | 4.2 | Создание модели ядра |  | 2.02w | 2024-03-25 12:00 | 2024-04-08 12:49 | 13 | 2024-03-25 12:00 | 2024-04-08 12:49 | 2.02w | 1.25d | 0d |  | Ведущий программист; Программист #1; Программист #2; Программист #3; Программист #4 | 400h | 3,336.46 | 3,336.46 |
| 15 | 4.3 | Тестирование модели ядра |  | 0.25w | 2024-04-08 12:49 | 2024-04-19 10:49 | 14 | 2024-04-08 12:49 | 2024-04-19 10:49 | 0.25w | 1.25d | 0d |  | Программист #1; Программист #2; Программист #3; Программист #4 | 40h | 480 | 480 |
| 16 | 4.4 | Создание рабочей версии ядра |  | 6.1w | 2024-04-19 10:49 | 2024-06-07 15:40 | 15 | 2024-04-19 10:49 | 2024-06-07 15:40 | 6.1w | 1.25d |  |  | Ведущий программист; Программист #1; Программист #2; Программист #3; Программист #4 | 1200h | 9,413.59 | 9,413.59 |
| 17 | 5 | Создание мультимедиа – наполнения |  | 6w | 2024-04-08 15:00 | 2024-05-28 12:00 | 3 | 2024-04-08 15:00 | 2024-05-28 12:00 | 6w | 39.75d |  |  | Мультимедиа корреспондент | 240h | 811.1 | 740 |
| 18 | 6 | Создание справочной системы |  | 2w | 2024-07-01 12:40 | 2024-07-15 15:40 | 7 | 2024-07-01 12:40 | 2024-07-15 15:40 | 2w | 6.42d |  |  | Технический писатель | 80h | 420 | 420 |
| 19 | 7 | **Создание руководства пользователя** |  | 17.25d | 2024-06-05 10:40 | 2024-07-01 12:40 | 7FS-10d | 2024-06-05 10:40 | 2024-07-01 12:40 | 17.25d | 1.25d |  |  |  | 160h | 1,010 | 1,010 |
| 20 | 7.1 | Разработка дизайна руководства |  | 1w | 2024-06-05 10:40 | 2024-06-13 10:40 |  | 2024-06-05 10:40 | 2024-06-13 10:40 | 1w | 1.25d | 0d |  | Художник-дизайнер | 40h | 390 | 390 |
| 21 | 7.2 | Написание руководства пользователя |  | 3w | 2024-06-07 10:40 | 2024-07-01 12:40 | 20SS+2d | 2024-06-07 10:40 | 2024-07-01 12:40 | 3w | 1.25d | 0d |  | Технический писатель | 120h | 620 | 620 |
| 22 | 8 | **Создание web – сайта и поддержка** |  | 23.5d | 2024-06-07 10:40 | 2024-07-11 15:40 |  | 2024-06-07 10:40 | 2024-07-11 15:40 | 23.5d | 1.25d | 0d |  |  | 248h | 2,106 | 2,106 |
| 23 | 8.1 | Разработка структуры сайта |  | 0.2w | 2024-06-07 10:40 | 2024-06-10 10:40 | 21SS | 2024-06-07 10:40 | 2024-06-10 10:40 | 0.2w | 1.25d | 0d |  | Web-дизайнер | 8h | 106 | 106 |
| 24 | 8.2 | Разработка дизайна сайта |  | 1.4w | 2024-06-10 10:40 | 2024-06-20 11:40 | 23 | 2024-06-10 10:40 | 2024-06-20 11:40 | 1.4w | 1.25d | 0d |  | 3D аниматор; Web-дизайнер; Художник-дизайнер | 120h | 1,110 | 1,110 |
| 25 | 8.3 | Наполнение сайта |  | 3w | 2024-06-20 11:40 | 2024-07-11 15:40 | 24 | 2024-06-20 11:40 | 2024-07-11 15:40 | 3w | 1.25d |  |  | Web-дизайнер | 120h | 890 | 890 |
| 26 | 9 | Тестирование сайта |  | 2.43w | 2024-07-04 15:40 | 2024-07-22 16:57 | 22FS-5d | 2024-07-04 15:40 | 2024-07-22 16:57 | 2.43w | 1.25d | 0d |  | Ведущий программист; Программист #1; Программист #2; Программист #3; Программист #4 | 480h | 3,945.85 | 3,945.85 |
| 27 | 10 | Сдача сайта в эксплуатацию | milestone | 0w | 2024-07-22 16:57 | 2024-07-22 16:57 | 26 | 2024-07-22 16:57 | 2024-07-22 16:57 | 0w | 1.25d |  |  |  |  |  |  |

| ID | WBS | Task | Type | Duration | Start | Finish | Baseline start | Baseline finish | Baseline duration | Total slack | Constraint | Resources | Work | Cost | Baseline cost |
| --- | --- | --- | --- | --- | --- | --- | --- | --- | --- | --- | --- | --- | --- | --- | --- |
| 28 | 11 | **Совещание** |  | 93.12d | 2024-03-06 09:00 | 2024-07-24 10:00 | 2024-03-06 09:00 | 2024-07-24 10:00 | 93.12d | 0d |  |  | 133h | 1,419.2 | 1,007 |
| 29 | 11.1 | Совещание 1 | manual | 1h | 2024-03-06 09:00 | 2024-03-06 10:00 | 2024-03-06 09:00 | 2024-03-06 10:00 | 1h |  | start no earlier than 2024-03-06 09:00 | 3D аниматор; Web-дизайнер; Ведущий программист; Мультимедиа корреспондент; Системный аналитик; Технический писатель; Художник-дизайнер | 7h | 53 | 53 |
| 30 | 11.2 | Совещание 2 | manual | 1h | 2024-03-13 09:00 | 2024-03-13 10:00 | 2024-03-13 09:00 | 2024-03-13 10:00 | 1h |  | start no earlier than 2024-03-13 09:00 | 3D аниматор; Web-дизайнер; Ведущий программист; Мультимедиа корреспондент; Системный аналитик; Технический писатель; Художник-дизайнер | 7h | 53 | 53 |
| 31 | 11.3 | Совещание 3 | manual | 1h | 2024-03-20 09:00 | 2024-03-20 10:00 | 2024-03-20 09:00 | 2024-03-20 10:00 | 1h |  | start no earlier than 2024-03-20 09:00 | 3D аниматор; Web-дизайнер; Ведущий программист; Мультимедиа корреспондент; Системный аналитик; Технический писатель; Художник-дизайнер | 7h | 53 | 53 |
| 32 | 11.4 | Совещание 4 | manual | 1h | 2024-03-27 09:00 | 2024-03-27 10:00 | 2024-03-27 09:00 | 2024-03-27 10:00 | 1h |  | start no earlier than 2024-03-27 09:00 | 3D аниматор; Web-дизайнер; Ведущий программист; Мультимедиа корреспондент; Системный аналитик; Технический писатель; Художник-дизайнер | 7h | 53 | 53 |
| 33 | 11.5 | Совещание 5 | manual | 1h | 2024-04-03 09:00 | 2024-04-03 10:00 | 2024-04-03 09:00 | 2024-04-03 10:00 | 1h |  | start no earlier than 2024-04-03 09:00 | 3D аниматор; Web-дизайнер; Ведущий программист; Мультимедиа корреспондент; Системный аналитик; Технический писатель; Художник-дизайнер | 7h | 53 | 53 |
| 34 | 11.6 | Совещание 6 | manual | 1h | 2024-04-10 09:00 | 2024-04-10 10:00 | 2024-04-10 09:00 | 2024-04-10 10:00 | 1h |  | start no earlier than 2024-04-10 09:00 | 3D аниматор; Web-дизайнер; Ведущий программист; Мультимедиа корреспондент; Системный аналитик; Технический писатель; Художник-дизайнер | 7h | 75.3 | 53 |
| 35 | 11.7 | Совещание 7 | manual | 1h | 2024-04-17 09:00 | 2024-04-17 10:00 | 2024-04-17 09:00 | 2024-04-17 10:00 | 1h |  | start no earlier than 2024-04-17 09:00 | 3D аниматор; Web-дизайнер; Ведущий программист; Мультимедиа корреспондент; Системный аналитик; Технический писатель; Художник-дизайнер | 7h | 175.3 | 53 |
| 36 | 11.8 | Совещание 8 | manual | 1h | 2024-04-24 09:00 | 2024-04-24 10:00 | 2024-04-24 09:00 | 2024-04-24 10:00 | 1h |  | start no earlier than 2024-04-24 09:00 | 3D аниматор; Web-дизайнер; Ведущий программист; Мультимедиа корреспондент; Системный аналитик; Технический писатель; Художник-дизайнер | 7h | 75.3 | 53 |
| 37 | 11.9 | Совещание 10 | manual | 1h | 2024-05-08 09:00 | 2024-05-08 10:00 | 2024-05-08 09:00 | 2024-05-08 10:00 | 1h |  | start no earlier than 2024-05-08 09:00 | 3D аниматор; Web-дизайнер; Ведущий программист; Мультимедиа корреспондент; Системный аналитик; Технический писатель; Художник-дизайнер | 7h | 75.3 | 53 |
| 38 | 11.10 | Совещание 11 | manual | 1h | 2024-05-15 09:00 | 2024-05-15 10:00 | 2024-05-15 09:00 | 2024-05-15 10:00 | 1h |  | start no earlier than 2024-05-15 09:00 | 3D аниматор; Web-дизайнер; Ведущий программист; Мультимедиа корреспондент; Системный аналитик; Технический писатель; Художник-дизайнер | 7h | 75.3 | 53 |
| 39 | 11.11 | Совещание 12 | manual | 1h | 2024-05-22 09:00 | 2024-05-22 10:00 | 2024-05-22 09:00 | 2024-05-22 10:00 | 1h |  | start no earlier than 2024-05-22 09:00 | 3D аниматор; Web-дизайнер; Ведущий программист; Мультимедиа корреспондент; Системный аналитик; Технический писатель; Художник-дизайнер | 7h | 75.3 | 53 |
| 40 | 11.12 | Совещание 13 | manual | 1h | 2024-05-29 09:00 | 2024-05-29 10:00 | 2024-05-29 09:00 | 2024-05-29 10:00 | 1h |  | start no earlier than 2024-05-29 09:00 | 3D аниматор; Web-дизайнер; Ведущий программист; Мультимедиа корреспондент; Системный аналитик; Технический писатель; Художник-дизайнер | 7h | 75.3 | 53 |
| 41 | 11.13 | Совещание 14 | manual | 1h | 2024-06-05 09:00 | 2024-06-05 10:00 | 2024-06-05 09:00 | 2024-06-05 10:00 | 1h |  | start no earlier than 2024-06-05 09:00 | 3D аниматор; Web-дизайнер; Ведущий программист; Мультимедиа корреспондент; Системный аналитик; Технический писатель; Художник-дизайнер | 7h | 75.3 | 53 |
| 42 | 11.14 | Совещание 16 | manual | 1h | 2024-06-19 09:00 | 2024-06-19 10:00 | 2024-06-19 09:00 | 2024-06-19 10:00 | 1h |  | start no earlier than 2024-06-19 09:00 | 3D аниматор; Web-дизайнер; Ведущий программист; Мультимедиа корреспондент; Системный аналитик; Технический писатель; Художник-дизайнер | 7h | 75.3 | 53 |
| 43 | 11.15 | Совещание 17 | manual | 1h | 2024-06-26 09:00 | 2024-06-26 10:00 | 2024-06-26 09:00 | 2024-06-26 10:00 | 1h |  | start no earlier than 2024-06-26 09:00 | 3D аниматор; Web-дизайнер; Ведущий программист; Мультимедиа корреспондент; Системный аналитик; Технический писатель; Художник-дизайнер | 7h | 75.3 | 53 |
| 44 | 11.16 | Совещание 18 | manual | 1h | 2024-07-03 09:00 | 2024-07-03 10:00 | 2024-07-03 09:00 | 2024-07-03 10:00 | 1h |  | start no earlier than 2024-07-03 09:00 | 3D аниматор; Web-дизайнер; Ведущий программист; Мультимедиа корреспондент; Системный аналитик; Технический писатель; Художник-дизайнер | 7h | 75.3 | 53 |
| 45 | 11.17 | Совещание 19 | manual | 1h | 2024-07-10 09:00 | 2024-07-10 10:00 | 2024-07-10 09:00 | 2024-07-10 10:00 | 1h |  | start no earlier than 2024-07-10 09:00 | 3D аниматор; Web-дизайнер; Ведущий программист; Мультимедиа корреспондент; Системный аналитик; Технический писатель; Художник-дизайнер | 7h | 75.3 | 53 |
| 46 | 11.18 | Совещание 20 | manual | 1h | 2024-07-17 09:00 | 2024-07-17 10:00 | 2024-07-17 09:00 | 2024-07-17 10:00 | 1h |  | start no earlier than 2024-07-17 09:00 | 3D аниматор; Web-дизайнер; Ведущий программист; Мультимедиа корреспондент; Системный аналитик; Технический писатель; Художник-дизайнер | 7h | 75.3 | 53 |
| 47 | 11.19 | Совещание 21 | manual | 1h | 2024-07-24 09:00 | 2024-07-24 10:00 | 2024-07-24 09:00 | 2024-07-24 10:00 | 1h |  | start no earlier than 2024-07-24 09:00 | 3D аниматор; Web-дизайнер; Ведущий программист; Мультимедиа корреспондент; Системный аналитик; Технический писатель; Художник-дизайнер | 7h | 75.3 | 53 |
