# lab_01

Schedule from MS Project, 2024-03-01 to 2024-08-15, status date 2024-05-16, costs in ₽, A marks actual dates.
Команда разработчиков из 16 человек занимается созданием карты города на основе собственного модуля отображения. Проект должен быть завершен в течение 6 месяцев. Бюджет проекта: 50 000 рублей.

## Calendars

- Стандартный: Mon-Fri 09:00-13:00, 14:00-18:00; Sat-Sun off. Exceptions (off unless hours are given): 2024-03-08 (8 марта, recurring), 2024-04-29 to 2024-05-01 (майские праздники, recurring), 2024-05-09 to 2024-05-10 (9 мая, recurring), 2024-06-12 (день России, recurring).

## Resources

| Resource | Group | Unit | Rate | Cost per use |
| --- | --- | --- | --- | --- |
| Ведущий программист | Программирование |  | 10 | 100 |
| Программист #1 | Программирование |  | 7 | 50 |
| Программист #2 | Программирование |  | 7 | 50 |
| Программист #3 | Программирование |  | 7 | 50 |
| Программист #4 | Программирование |  | 7 | 50 |
| Системный аналитик | Анализ |  | 20 | 300 |
| Художник-дизайнер | Дизайн |  | 8 | 70 |
| Технический писатель | Документация |  | 5 | 20 |
| Web-дизайнер | Internet |  | 7 | 50 |
| 3D аниматор | Дизайн |  | 8 | 70 |
| Мультимедиа корреспондент | М-медиа |  | 3 | 20 |
| Наборщик данных #1 | Ввод данных |  | 2 | 10 |
| Наборщик данных #2 | Ввод данных |  | 2 | 10 |
| Наборщик данных #3 | Ввод данных |  | 2 | 10 |
| Наборщик данных #4 | Ввод данных |  | 2 | 10 |
| Наборщик данных #5 | Ввод данных |  | 2 | 10 |
| Сервер | Аренда оборудования |  | 2 |  |
| Стажер | Программирование |  | 3 |  |
| Лицензия на спец. ПО | Лицензии | шт | 2.4 | 400 |

## Schedule

| ID | WBS | Task | Type | Duration | Start | Finish | Predecessors | Complete | Remaining | Baseline start | Baseline finish | Baseline duration | Total slack | Constraint | Resources | Work | Actual work | Cost | Baseline cost | Actual cost |
| --- | --- | --- | --- | --- | --- | --- | --- | --- | --- | --- | --- | --- | --- | --- | --- | --- | --- | --- | --- | --- |
| 1 | 1 | Начало проекта | milestone | 0w | 2024-03-01 09:00 A | 2024-03-01 09:00 A |  | 100% |  | 2024-03-01 09:00 | 2024-03-01 09:00 | 0w |  |  |  |  |  | 3,200 |  | 3,200 |
| 2 | 2 | **Создание интерфейса** |  | 85.87d | 2024-03-01 09:00 A | 2024-07-09 16:58 | 1 | 82% | 15.07d | 2024-03-01 09:00 | 2024-06-20 10:40 | 72.21d | 0d |  |  | 560h | 320h | 5,542.25 | 5,650 | 3,590 |
| 3 | 2.1 | **Разработка дизайна интерфейса** |  | 30d | 2024-03-01 09:00 A | 2024-04-12 18:00 A |  | 100% |  | 2024-03-01 09:00 | 2024-04-08 15:00 | 25.62d |  |  |  | 320h | 320h | 2,770 | 2,770 | 2,770 |
| 4 | 2.1.1 | Разработка 2D графических элементов |  | 3w | 2024-03-01 09:00 A | 2024-03-21 19:00 A |  | 100% |  | 2024-03-01 09:00 | 2024-03-25 12:00 | 3w |  |  | Художник-дизайнер | 120h | 120h | 1,030 | 1,030 | 1,030 |
| 5 | 2.1.2 | Разработка 3D графических элементов |  | 2w | 2024-03-01 09:00 A | 2024-03-18 11:00 A | 4SS | 100% |  | 2024-03-01 09:00 | 2024-03-18 11:00 | 2w |  |  | 3D аниматор | 80h | 80h | 710 | 710 | 710 |
| 6 | 2.1.3 | Создание заставки |  | 3.88w | 2024-03-18 11:00 A | 2024-04-12 18:00 A | 5 | 100% |  | 2024-03-18 11:00 | 2024-04-08 15:00 | 3w |  |  | 3D аниматор | 120h | 120h | 1,030 | 1,030 | 1,030 |
| 7 | 2.2 | Программирование интерфейса |  | 1.89w | 2024-06-27 11:23 | 2024-07-09 16:58 | 3, 12 |  |  | 2024-06-07 15:40 | 2024-06-20 10:40 | 1.5w | 0d |  | Программист #3; Программист #1; Программист #2; Стажер [50%] | 240h |  | 1,772.25 | 1,880 |  |
| 8 | 3 | **Построение базы объектов** |  | 81.29d | 2024-03-25 12:00 A | 2024-07-24 15:17 |  | 42% | 47.53d | 2024-03-25 12:00 | 2024-07-19 10:00 | 77.75d | 15.53d |  | Сервер | 3038h | 945.57h | 10,158.36 | 15,194 | 5,393.51 |
| 9 | 3.1 | Анализ и построение структуры базы объектов |  | 2w | 2024-03-25 12:00 A | 2024-04-08 15:00 A |  | 100% |  | 2024-03-25 12:00 | 2024-04-08 15:00 | 2w |  |  | Системный аналитик | 80h | 80h | 1,900 | 1,900 | 1,900 |
| 10 | 3.2 | Программирование средств обработки базы объектов |  | 2.3w | 2024-04-08 15:00 A | 2024-04-23 15:17 A | 9 | 100% |  | 2024-04-08 15:00 | 2024-04-18 10:00 | 1.5w |  |  | Программист #3; Программист #1; Программист #2; Стажер [50%] | 240h | 240h | 1,772.36 | 1,880 | 1,772.36 |
| 11 | 3.3 | Наполнение базы объектов |  | 12w | 2024-04-23 15:17 A | 2024-07-24 15:17 | 10 | 21% | 9.53w | 2024-04-18 10:00 | 2024-07-19 10:00 | 12w | 15.53d | finish no earlier than 2024-07-19 18:00 | Наборщик данных #1; Наборщик данных #2; Наборщик данных #3; Наборщик данных #4; Наборщик данных #5 | 2400h | 493.52h | 4,850 | 4,850 | 1,037.03 |
| 12 | 4 | **Создание ядра GIS** |  | 77.3d | 2024-03-01 09:00 A | 2024-06-27 11:23 |  | 56% | 33.64d | 2024-03-01 09:00 | 2024-06-07 15:40 | 64.71d | 0d |  |  | 1880h | 1031.81h | 17,688.87 | 18,230.05 | 10,996.42 |
| 13 | 4.1 | Анализ и проектирование ядра |  | 3w | 2024-03-01 09:00 A | 2024-03-25 12:00 A |  | 100% |  | 2024-03-01 09:00 | 2024-03-25 12:00 | 3w |  |  | Ведущий программист; Системный аналитик | 240h | 240h | 4,000 | 4,000 | 4,000 |
| 14 | 4.2 | Создание модели ядра |  | 2.66w | 2024-03-25 12:00 A | 2024-04-16 16:16 A | 13 | 100% |  | 2024-03-25 12:00 | 2024-04-08 12:49 | 2.02w |  |  | Ведущий программист; Программист #1; Программист #2; Программист #3; Программист #4; Стажер [50%] | 400h | 400h | 3,144.89 | 3,336.46 | 3,144.89 |
| 15 | 4.3 | Тестирование модели ядра |  | 0.31w | 2024-04-16 16:16 A | 2024-04-26 16:42 A | 14 | 100% |  | 2024-04-08 12:49 | 2024-04-19 10:49 | 0.25w |  |  | Программист #1; Программист #2; Программист #3; Стажер [50%] | 40h | 40h | 426.64 | 480 | 426.64 |
| 16 | 4.4 | Создание рабочей версии ядра |  | 8.24w | 2024-04-26 16:42 A | 2024-06-27 11:23 | 15 | 25% | 6.18w | 2024-04-19 10:49 | 2024-06-07 15:40 | 6.1w | 0d |  | Ведущий программист; Программист #1; Программист #2; Программист #3; Стажер [50%] | 1200h | 351.81h | 9,117.35 | 9,413.59 | 2,864.89 |
| 17 | 5 | Создание мультимедиа – наполнения |  | 3.6w | 2024-04-15 09:00 A | 2024-05-13 16:00 A | 3 | 100% |  | 2024-04-08 15:00 | 2024-05-28 12:00 | 6w |  |  | Мультимедиа корреспондент; Лицензия на спец. ПО [1 шт] | 240h | 240h | 1,106.46 | 740 | 1,106.46 |
| 18 | 6 | Создание справочной системы |  | 2w | 2024-07-22 09:00 | 2024-08-05 11:00 | 7 |  |  | 2024-07-01 12:40 | 2024-07-15 15:40 | 2w | 7.95d |  | Технический писатель | 80h |  | 420 | 420 |  |
| 19 | 7 | **Создание руководства пользователя** |  | 17.62d | 2024-06-25 16:58 | 2024-07-19 12:58 | 7FS-10d |  |  | 2024-06-05 10:40 | 2024-07-01 12:40 | 17.25d | 0d |  |  | 160h |  | 1,010 | 1,010 |  |
| 20 | 7.1 | Разработка дизайна руководства |  | 1w | 2024-06-25 16:58 | 2024-07-02 11:58 |  |  |  | 2024-06-05 10:40 | 2024-06-13 10:40 | 1w | 0d |  | Художник-дизайнер | 40h |  | 390 | 390 |  |
| 21 | 7.2 | Написание руководства пользователя |  | 3w | 2024-06-27 16:58 | 2024-07-19 12:58 | 20SS+2d |  |  | 2024-06-07 10:40 | 2024-07-01 12:40 | 3w | 0d |  | Технический писатель | 120h |  | 620 | 620 |  |
| 22 | 8 | **Создание web – сайта и поддержка** |  | 24.39d | 2024-06-27 16:58 | 2024-08-01 11:06 |  |  |  | 2024-06-07 10:40 | 2024-07-11 15:40 | 23.5d | 0d |  |  | 248h |  | 2,106 | 2,106 |  |
| 23 | 8.1 | Разработка структуры сайта |  | 0.2w | 2024-06-27 16:58 | 2024-06-28 16:58 | 21SS |  |  | 2024-06-07 10:40 | 2024-06-10 10:40 | 0.2w | 0d |  | Web-дизайнер | 8h |  | 106 | 106 |  |
| 24 | 8.2 | Разработка дизайна сайта |  | 1.43w | 2024-06-28 16:58 | 2024-07-09 15:58 | 23 |  |  | 2024-06-10 10:40 | 2024-06-20 11:40 | 1.4w | 0d |  | 3D аниматор; Web-дизайнер; Художник-дизайнер | 120h |  | 1,110 | 1,110 |  |
| 25 | 8.3 | Наполнение сайта |  | 3w | 2024-07-09 15:58 | 2024-08-01 11:06 | 24 |  |  | 2024-06-20 11:40 | 2024-07-11 15:40 | 3w | 0d |  | Web-дизайнер | 120h |  | 890 | 890 |  |
| 26 | 9 | Тестирование сайта |  | 3.29w | 2024-07-25 11:06 | 2024-08-15 10:34 | 22FS-5d |  |  | 2024-07-04 15:40 | 2024-07-22 16:57 | 2.43w | 0d |  | Ведущий программист; Программист #1; Программист #2; Программист #3; Стажер [50%] | 480h |  | 3,802.61 | 3,945.85 |  |
| 27 | 10 | Сдача сайта в эксплуатацию | milestone | 0w | 2024-08-15 10:34 | 2024-08-15 10:34 | 26 |  |  | 2024-07-22 16:57 | 2024-07-22 16:57 | 0w | 0d |  |  |  |  |  |  |  |

| ID | WBS | Task | Type | Duration | Start | Finish | Complete | Remaining | Baseline start | Baseline finish | Baseline duration | Total slack | Constraint | Resources | Work | Actual work | Cost | Baseline cost | Actual cost |
| --- | --- | --- | --- | --- | --- | --- | --- | --- | --- | --- | --- | --- | --- | --- | --- | --- | --- | --- | --- |
| 28 | 11 | **Совещание** |  | 93.12d | 2024-03-06 09:00 A | 2024-07-24 10:00 | 53% | 44.11d | 2024-03-06 09:00 | 2024-07-24 10:00 | 93.12d | 0d |  |  | 37.86h | 19.86h | 232.76 | 1,007 | 124.26 |
| 29 | 11.1 | Совещание 1 | manual | 1h | 2024-03-06 09:00 A | 2024-03-06 10:00 A | 100% |  | 2024-03-06 09:00 | 2024-03-06 10:00 | 1h |  | start no earlier than 2024-03-06 09:00 | 3D аниматор; Web-дизайнер; Ведущий программист; Мультимедиа корреспондент; Системный аналитик; Технический писатель; Художник-дизайнер | 2.71h | 2.71h | 14.43 | 53 | 14.43 |
| 30 | 11.2 | Совещание 2 | manual | 1h | 2024-03-13 09:00 A | 2024-03-13 10:00 A | 100% |  | 2024-03-13 09:00 | 2024-03-13 10:00 | 1h |  | start no earlier than 2024-03-13 09:00 | 3D аниматор; Web-дизайнер; Ведущий программист; Мультимедиа корреспондент; Системный аналитик; Технический писатель; Художник-дизайнер | 2.71h | 2.71h | 14.43 | 53 | 14.43 |
| 31 | 11.3 | Совещание 3 | manual | 1h | 2024-03-20 09:00 A | 2024-03-20 10:00 A | 100% |  | 2024-03-20 09:00 | 2024-03-20 10:00 | 1h |  | start no earlier than 2024-03-20 09:00 | 3D аниматор; Web-дизайнер; Ведущий программист; Мультимедиа корреспондент; Системный аналитик; Технический писатель; Художник-дизайнер | 2.71h | 2.71h | 14.43 | 53 | 14.43 |
| 32 | 11.4 | Совещание 4 | manual | 1h | 2024-03-27 09:00 A | 2024-03-27 10:00 A | 100% |  | 2024-03-27 09:00 | 2024-03-27 10:00 | 1h |  | start no earlier than 2024-03-27 09:00 | 3D аниматор; Web-дизайнер; Ведущий программист; Мультимедиа корреспондент; Системный аналитик; Технический писатель; Художник-дизайнер | 2.71h | 2.71h | 14.43 | 53 | 14.43 |
| 33 | 11.5 | Совещание 5 | manual | 1h | 2024-04-03 09:00 A | 2024-04-03 10:00 A | 100% |  | 2024-04-03 09:00 | 2024-04-03 10:00 | 1h |  | start no earlier than 2024-04-03 09:00 | Ведущий программист | 1h | 1h | 10 | 53 | 10 |
| 34 | 11.6 | Совещание 6 | manual | 1h | 2024-04-10 09:00 A | 2024-04-10 10:00 A | 100% |  | 2024-04-10 09:00 | 2024-04-10 10:00 | 1h |  | start no earlier than 2024-04-10 09:00 | Ведущий программист | 1h | 1h | 10 | 53 | 10 |
| 35 | 11.7 | Совещание 7 | manual | 1h | 2024-04-17 09:00 A | 2024-04-17 10:00 A | 100% |  | 2024-04-17 09:00 | 2024-04-17 10:00 | 1h |  | start no earlier than 2024-04-17 09:00 | Ведущий программист; Мультимедиа корреспондент | 2h | 2h | 13.3 | 53 | 13.3 |
| 36 | 11.8 | Совещание 8 | manual | 1h | 2024-04-24 09:00 A | 2024-04-24 10:00 A | 100% |  | 2024-04-24 09:00 | 2024-04-24 10:00 | 1h |  | start no earlier than 2024-04-24 09:00 | Ведущий программист; Мультимедиа корреспондент | 1h | 1h | 6.65 | 53 | 6.65 |
| 37 | 11.9 | Совещание 10 | manual | 1h | 2024-05-08 09:00 A | 2024-05-08 10:00 A | 100% |  | 2024-05-08 09:00 | 2024-05-08 10:00 | 1h |  | start no earlier than 2024-05-08 09:00 | Ведущий программист; Мультимедиа корреспондент | 2h | 2h | 13.3 | 53 | 13.3 |
| 38 | 11.10 | Совещание 11 | manual | 1h | 2024-05-15 09:00 A | 2024-05-15 10:00 A | 100% |  | 2024-05-15 09:00 | 2024-05-15 10:00 | 1h |  | start no earlier than 2024-05-15 09:00 | Ведущий программист; Мультимедиа корреспондент | 2h | 2h | 13.3 | 53 | 13.3 |
| 39 | 11.11 | Совещание 12 | manual | 1h | 2024-05-22 09:00 | 2024-05-22 10:00 |  |  | 2024-05-22 09:00 | 2024-05-22 10:00 | 1h |  | start no earlier than 2024-05-22 09:00 | Мультимедиа корреспондент | 1h |  | 3.3 | 53 |  |
| 40 | 11.12 | Совещание 13 | manual | 1h | 2024-05-29 09:00 | 2024-05-29 10:00 |  |  | 2024-05-29 09:00 | 2024-05-29 10:00 | 1h |  | start no earlier than 2024-05-29 09:00 | Мультимедиа корреспондент | 1h |  | 3.3 | 53 |  |
| 41 | 11.13 | Совещание 14 | manual | 1h | 2024-06-05 09:00 | 2024-06-05 10:00 |  |  | 2024-06-05 09:00 | 2024-06-05 10:00 | 1h |  | start no earlier than 2024-06-05 09:00 | Мультимедиа корреспондент | 1h |  | 3.3 | 53 |  |
| 42 | 11.14 | Совещание 16 | manual | 1h | 2024-06-19 09:00 | 2024-06-19 10:00 |  |  | 2024-06-19 09:00 | 2024-06-19 10:00 | 1h |  | start no earlier than 2024-06-19 09:00 | Ведущий программист; Мультимедиа корреспондент | 2h |  | 13.3 | 53 |  |
| 43 | 11.15 | Совещание 17 | manual | 1h | 2024-06-26 09:00 | 2024-06-26 10:00 |  |  | 2024-06-26 09:00 | 2024-06-26 10:00 | 1h |  | start no earlier than 2024-06-26 09:00 | Ведущий программист; Мультимедиа корреспондент | 2h |  | 13.3 | 53 |  |
| 44 | 11.16 | Совещание 18 | manual | 1h | 2024-07-03 09:00 | 2024-07-03 10:00 |  |  | 2024-07-03 09:00 | 2024-07-03 10:00 | 1h |  | start no earlier than 2024-07-03 09:00 | 3D аниматор; Web-дизайнер; Художник-дизайнер | 3h |  | 15 | 53 |  |
| 45 | 11.17 | Совещание 19 | manual | 1h | 2024-07-10 09:00 | 2024-07-10 10:00 |  |  | 2024-07-10 09:00 | 2024-07-10 10:00 | 1h |  | start no earlier than 2024-07-10 09:00 | 3D аниматор; Web-дизайнер; Художник-дизайнер | 3h |  | 15 | 53 |  |
| 46 | 11.18 | Совещание 20 | manual | 1h | 2024-07-17 09:00 | 2024-07-17 10:00 |  |  | 2024-07-17 09:00 | 2024-07-17 10:00 | 1h |  | start no earlier than 2024-07-17 09:00 | 3D аниматор; Web-дизайнер; Ведущий программист | 3h |  | 25 | 53 |  |
| 47 | 11.19 | Совещание 21 | manual | 1h | 2024-07-24 09:00 | 2024-07-24 10:00 |  |  | 2024-07-24 09:00 | 2024-07-24 10:00 | 1h |  | start no earlier than 2024-07-24 09:00 | Web-дизайнер; Ведущий программист | 2h |  | 17 | 53 |  |
