# РК-1

Schedule from MS Project, 2024-04-01 to 2024-07-05, status date 2024-05-25, costs in р., A marks actual dates.
Microsoft

## Calendars

- Стандартный: Mon-Fri 09:00-13:00, 14:00-18:00; Sat-Sun off. Exceptions (off unless hours are given): 2024-04-21 to 2024-07-17 09:00-13:00, 14:00-15:00 (Профилактика, recurring), 2024-04-27 09:00-13:00, 14:00-18:00 (Рабочий день), 2024-04-29 to 2024-05-01 (1 мая), 2024-05-08 to 2024-05-09 (9 мая), 2024-06-12 (12 июня).

## Resources

| Resource | Group | Unit | Rate | Cost per use |
| --- | --- | --- | --- | --- |
| Аналитик |  |  | 500 | 5000 |
| Ведущий программист | Программисты |  | 437.5 | 3000 |
| Программист 1 | Программисты |  | 312.5 | 2000 |
| Программист 2 | Программисты |  | 312.5 | 2000 |
| Программист 3 | Программисты |  | 312.5 | 2000 |
| Технический писатель |  |  | 250 | 1500 |
| Наборщики данных | Технический персонал |  | 218.75 | 1000 |
| Сервер базы данных | Оборудование |  | 25000 | 10000 |
| Картриджи для принтера | Расходные материалы | шт | 2500 |  |
| Бумага | Расходные материалы | пач | 200 |  |
| Специалист из аутсорсинговой компании |  | обслуживание | 3000 |  |
| Технический писатель 2 |  |  | 250 | 1500 |

## Schedule

| ID | WBS | Task | Type | Duration | Start | Finish | Predecessors | Complete | Remaining | Baseline start | Baseline finish | Baseline duration | Total slack | Free slack | Constraint | Resources | Work | Actual work | Cost | Baseline cost | Actual cost |
| --- | --- | --- | --- | --- | --- | --- | --- | --- | --- | --- | --- | --- | --- | --- | --- | --- | --- | --- | --- | --- | --- |
| 1 | 1 | Начало реализации проекта | milestone | 0d | 2024-04-01 08:00 A | 2024-04-01 08:00 A |  | 100% |  | 2024-04-01 08:00 | 2024-04-01 08:00 | 0d |  |  |  |  |  |  |  |  |  |
| 2 | 2 | **Программирование** |  | 38.88d | 2024-04-02 09:00 A | 2024-05-31 18:00 |  | 92% | 3.26d | 2024-04-02 09:00 | 2024-05-29 10:00 | 36d | 0d |  |  | Сервер базы данных | 816h | 724h | 357,562.78 | 353,500 | 336,192.78 |
| 3 | 2.1 | Постановка задачи |  | 5d | 2024-04-02 09:00 A | 2024-04-08 18:00 A | 1FS+1d | 100% |  | 2024-04-02 09:00 | 2024-04-08 18:00 | 5d |  |  |  | Ведущий программист; Аналитик | 80h | 80h | 45,500 | 45,500 | 45,500 |
| 4 | 2.2 | Разработка интерфейса |  | 14.62d | 2024-04-09 09:00 A | 2024-04-29 18:00 A | 3 | 100% |  | 2024-04-09 09:00 | 2024-04-22 18:00 | 10d |  |  |  | Ведущий программист; Программист 1 | 160h | 160h | 65,000 | 65,000 | 65,000 |
| 5 | 2.3 | Разработка модулей обработки данных |  | 15d | 2024-05-02 09:00 A | 2024-05-27 16:00 | 4 | 95% | 0.75d | 2024-04-23 09:00 | 2024-05-20 16:00 | 15d | 4.25d |  |  | Программист 2; Программист 3 | 240h | 228h | 79,000 | 79,000 | 75,250 |
| 6 | 2.4 | Разработка базы данных |  | 27.88d | 2024-04-09 09:00 A | 2024-05-23 18:00 A | 3 | 100% |  | 2024-04-09 09:00 | 2024-05-20 16:00 | 25d |  |  |  | Аналитик; Программист 1 | 240h | 240h | 108,562.78 | 104,500 | 108,562.78 |
| 7 | 2.5 | Заполнение базы данных |  | 6d | 2024-05-24 09:00 A | 2024-05-31 18:00 | 6 | 17% | 5d | 2024-05-20 16:00 | 2024-05-29 10:00 | 6d | 0d |  |  | Наборщики данных [200%] | 96h | 16h | 23,000 | 23,000 | 5,500 |
| 8 | 3 | Программирование завершено | milestone | 0d | 2024-05-31 18:00 | 2024-05-31 18:00 | 5, 7 |  |  | 2024-05-29 10:00 | 2024-05-29 10:00 | 0d | 0d |  |  |  |  |  |  |  |  |
| 9 | 4 | **Тестирование и отладка** |  | 20.75d | 2024-05-27 09:00 | 2024-06-26 13:00 |  |  |  | 2024-05-22 10:00 | 2024-06-20 17:00 | 20d | 6.75d |  |  |  | 320h |  | 125,000 | 125,000 |  |
| 10 | 4.1 | Подготовка тестовых наборов данных |  | 5.75d | 2024-05-27 09:00 | 2024-06-03 16:00 | 8FS-5d |  |  | 2024-05-22 10:00 | 2024-05-29 10:00 | 5d | 6.75d | 0d |  | Программист 1; Программист 3 | 80h |  | 29,000 | 29,000 |  |
| 11 | 4.2 | Тестирование и исправление ошибок |  | 15d | 2024-06-03 16:00 | 2024-06-26 13:00 | 10 |  |  | 2024-05-29 10:00 | 2024-06-20 17:00 | 15d | 6.75d | 0d |  | Программист 2; Ведущий программист | 240h |  | 95,000 | 95,000 |  |
| 12 | 5 | Отладка завершена | milestone | 0d | 2024-06-26 13:00 | 2024-06-26 13:00 | 11 |  |  | 2024-06-20 17:00 | 2024-06-20 17:00 | 0d | 6.75d |  |  |  |  |  |  |  |  |
| 13 | 6 | **Разработка документации** |  | 12.5d | 2024-06-18 12:00 | 2024-07-05 15:00 |  |  |  | 2024-06-13 14:00 | 2024-07-02 12:00 | 12.5d | 0d |  |  | Картриджи для принтера [0.01 шт]; Бумага [0.01 пач] | 200h |  | 59,250 | 59,250 |  |
| 14 | 6.1 | Составление программной документации |  | 5d | 2024-06-18 12:00 | 2024-06-25 16:00 | 8SS+10d |  |  | 2024-06-13 14:00 | 2024-06-20 17:00 | 5d | 0d |  |  | Технический писатель; Технический писатель 2 | 80h |  | 23,000 | 23,000 |  |
| 15 | 6.2 | Составление пользовательской документации |  | 7.5d | 2024-06-25 16:00 | 2024-07-05 15:00 | 14 |  |  | 2024-06-20 17:00 | 2024-07-02 12:00 | 7.5d | 0d |  |  | Технический писатель; Технический писатель 2 | 120h |  | 33,000 | 33,000 |  |
| 16 | 7 | Конец проекта | milestone | 0d | 2024-07-05 15:00 | 2024-07-05 15:00 | 15 |  |  | 2024-07-02 12:00 | 2024-07-02 12:00 | 0d | 0d |  |  |  |  |  |  |  |  |
| 17 | 8 | **Профилактика оборудования** |  | 43.5d | 2024-04-23 09:00 A | 2024-07-02 12:00 |  | 50% | 21.75d | 2024-04-23 09:00 | 2024-07-02 12:00 | 43.5d | 0d |  |  |  |  |  | 18,000 | 18,000 | 9,000 |
| 18 | 8.1 | Профилактика оборудования 1 | manual | 3h | 2024-04-23 09:00 A | 2024-04-23 12:00 A |  | 100% |  | 2024-04-23 09:00 | 2024-04-23 12:00 | 3h |  |  | start no earlier than 2024-04-23 09:00 | Специалист из аутсорсинговой компании [1 обслуживание] |  |  | 3,000 | 3,000 | 3,000 |
| 19 | 8.2 | Профилактика оборудования 2 | manual | 3h | 2024-05-07 09:00 A | 2024-05-07 12:00 A |  | 100% |  | 2024-05-07 09:00 | 2024-05-07 12:00 | 3h |  |  | start no earlier than 2024-05-07 09:00 | Специалист из аутсорсинговой компании [1 обслуживание] |  |  | 3,000 | 3,000 | 3,000 |
| 20 | 8.3 | Профилактика оборудования 3 | manual | 3h | 2024-05-21 09:00 A | 2024-05-21 12:00 A |  | 100% |  | 2024-05-21 09:00 | 2024-05-21 12:00 | 3h |  |  | start no earlier than 2024-05-21 09:00 | Специалист из аутсорсинговой компании [1 обслуживание] |  |  | 3,000 | 3,000 | 3,000 |
| 21 | 8.4 | Профилактика оборудования 4 | manual | 3h | 2024-06-04 09:00 | 2024-06-04 12:00 |  |  |  | 2024-06-04 09:00 | 2024-06-04 12:00 | 3h |  |  | start no earlier than 2024-06-04 09:00 | Специалист из аутсорсинговой компании [1 обслуживание] |  |  | 3,000 | 3,000 |  |
| 22 | 8.5 | Профилактика оборудования 5 | manual | 3h | 2024-06-18 09:00 | 2024-06-18 12:00 |  |  |  | 2024-06-18 09:00 | 2024-06-18 12:00 | 3h |  |  | start no earlier than 2024-06-18 09:00 | Специалист из аутсорсинговой компании [1 обслуживание] |  |  | 3,000 | 3,000 |  |
| 23 | 8.6 | Профилактика оборудования 6 | manual | 3h | 2024-07-02 09:00 | 2024-07-02 12:00 |  |  |  | 2024-07-02 09:00 | 2024-07-02 12:00 | 3h |  |  | start no earlier than 2024-07-02 09:00 | Специалист из аутсорсинговой компании [1 обслуживание] |  |  | 3,000 | 3,000 |  |
